How a schedule from MS Project changed from version to version. A marks actual dates.

## Version 1 (saved 2017-03-22)

Note of the change: Version laboratorio

| ID | WBS | Task | Duration | Start | Finish | Predecessors | Total float |
| --- | --- | --- | --- | --- | --- | --- | --- |
| 1 | 1 | **TOTAL PROYECTO** | 290d | 2017-02-20 | 2018-04-20 |  |  |
| 2 | 1.1 | **FASE 1: PREPARACIÓN PARA LA FORMULACIÓN** | 33d | 2017-02-20 | 2017-04-06 |  | 0d |
| 3 |  | INICIO | 1d | 2017-02-20 | 2017-02-20 |  |  |
| 4 |  | TERMINOS DE REFERENCIA. Objetivos. Condicionantes del Promotor | 10d | 2017-02-21 | 2017-03-07 | 3 |  |
| 5 |  | FINANCIACION | 7d | 2017-02-21 | 2017-03-02 | 3 |  |
| 6 |  | COMITÉ DE COORDINACION. Constitución y organización | 5d | 2017-02-21 | 2017-02-27 | 3 |  |
| 7 |  | EQUIPO DE FORMULACION. Recursos humanos y técnicos | 15d | 2017-03-01 | 2017-03-21 | 4SS, 6 |  |
| 8 |  | METODOLOGIA Y PLAN DE TRABAJO | 10d | 2017-03-15 | 2017-03-28 | 7FS-5d, 5, 4, 6SS |  |
| 9 |  | DOC. Nº1: Fin P.F | 5d | 2017-03-29 | 2017-04-04 | 8 |  |
| 10 |  | Entrega al PROMOTOR. Doc. nº1 | 1d | 2017-04-05 | 2017-04-05 | 9 |  |
| 11 |  | SEMINARIO DE LANZAMIENTO DEL PROYECTO | 1d | 2017-04-06 | 2017-04-06 | 10 |  |
| 12 | 1.2 | **FASE 2: ANALISIS Y DIAGNOSTICO** | 134d? | 2017-02-20 | 2017-08-31 |  | 0d |
| 13 | 1.2.1 | **ANALISIS ANTECEDENTES** | 15d | 2017-02-20 | 2017-03-13 | 11 |  |
| 14 |  | POLITICAS Y PROGRAMAS | 10d | 2017-04-07 | 2017-04-24 | 11 |  |
| 15 |  | MARCO LEGAL | 15d | 2017-04-07 | 2017-05-02 | 11 |  |
| 16 |  | BASES DE DATOS EXISTENTES | 7d | 2017-04-07 | 2017-04-19 | 11 |  |
| 17 | 1.2.2 | **ANALISIS DEL AREA DEL PROYECTO** | 80d | 2017-04-19 | 2017-08-10 | 11, 16 | 0d |
| 18 |  | ANALISIS DE RECURSOS NATURALES. INVENTARIO AMBIENTAL | 35d | 2017-04-19 | 2017-06-08 |  |  |
| 19 |  | INFRAESTRUCTURAS Y SERVICIOS | 20d | 2017-06-09 | 2017-07-06 | 18 |  |
| 20 |  | ANALISIS DE SECTORES PRODUCTIVOS | 25d | 2017-07-07 | 2017-08-10 | 14, 13, 15, 19 |  |
| 21 |  | ANALISIS POBLACIONAL | 20d | 2017-04-19 | 2017-05-18 |  |  |
| 22 |  | SISTEMA GENERAL TERRITORIAL DE INFORMACION | 21d | 2017-04-20 | 2017-05-19 | 16 |  |
| 23 | 1.2.3 | **ANALISIS DE AGENTES Y PARTICIPACION** | 82d | 2017-05-05 | 2017-08-29 |  | 0d |
| 24 |  | IDENTIFICACIÓN DE AGENTES Y TIPOLOGIA | 10d | 2017-05-05 | 2017-05-18 | 22SS+10d |  |
| 25 |  | ANALISIS DE LA PARTICIPACIÓN: ENCUESTA CON LOS AGENTES | 60d | 2017-05-19 | 2017-08-10 | 24 |  |
| 26 |  | TALLER DE PARTICIPACIÓN AGENTES PUBLICOS | 1d | 2017-06-02 | 2017-06-02 | 25SS+10d |  |
| 27 |  | ANALISIS PROSPECTIVO SIN | 6d | 2017-06-05 | 2017-06-12 | 26 |  |
| 28 |  | INFORME DE PARTICIPACION: Problemas, necesidades, oportunidades | 10d | 2017-08-11 | 2017-08-25 | 27, 25 |  |
| 29 |  | PRESENTACIÓN Y VALIDACION DE CONCLUSIONES | 2d | 2017-08-28 | 2017-08-29 | 28 |  |
| 30 |  | CONCLUSIONES Y Doc. Nº2. Presentación al PROMOTOR | 1d | 2017-08-30 | 2017-08-30 | 29 |  |
| 31 |  | Doc. nº2. REVISIÓN POR EL PROMOTOR | 1d? | 2017-08-31 | 2017-08-31 | 29, 30 |  |

## Version 2 (saved 2017-03-22)

Note of the change: Full Tareas

Last finish stays 2018-04-20.

Added:

| ID | Task | Duration | Start | Finish | Predecessors |
| --- | --- | --- | --- | --- | --- |
| 32 | **FASE 3: DISEÑO DEL PROYECTO** | 94d | 2017-08-31 | 2018-01-18 |  |
| 33 | OBJETIVOS Y METAS | 1d | 2017-08-31 | 2017-08-31 | 31 |
| 34 | ALTERNATIVA ESTRATEGICAS: ANÁLISIS Y SELECCIÓN | 7d | 2017-09-04 | 2017-09-13 | 33 |
| 35 | FORMULACION DE LOS COMPONENTES | 60d | 2017-09-14 | 2017-12-12 | 34 |
| 36 | DISEÑO DE LA ORGANIZACIÓN | 10d | 2017-12-13 | 2017-12-27 | 35 |
| 37 | SISTEMA DE SEGUIMIENTO Y EVALUACION. Programación de la ejecución | 7d | 2017-12-28 | 2018-01-08 | 36, 35 |
| 38 | PRESUPUESTACION | 4d | 2017-12-28 | 2018-01-03 | 35, 36 |
| 39 | Doc. Nº 3. Entrega al PROMOTOR | 0d | 2018-01-04 | 2018-01-04 | 38 |
| 40 | Doc. Nº 3. REVISION POR EL PROMOTOR | 10d | 2018-01-05 | 2018-01-18 | 39 |
| 41 | **FASE 4: EVALUACION MULTICRITERIO** | 10d | 2018-01-19 | 2018-02-01 |  |
| 42 | EVALUACION ECONOMICO-FINANCIERA | 10d | 2018-01-19 | 2018-02-01 | 40 |
| 43 | EVALUACION SOCIAL Y CULTURAL | 10d | 2018-01-19 | 2018-02-01 | 40 |
| 44 | EVALUACION AMBIENTAL | 10d | 2018-01-19 | 2018-02-01 | 40 |
| 45 | EVALUACION DE RIESGOS, SEGURIDAD Y SALUD DEL PROYECTO | 10d | 2018-01-19 | 2018-02-01 | 40 |
| 46 | Entrega Doc. nº 4. VIABILIDAD Y SOSTENIBLIDAD | 0d | 2018-01-22 | 2018-01-22 | 45 |
| 47 | Revisión Doc. Nº 4 | 5d | 2018-01-22 | 2018-01-26 | 42, 43, 44 |
| 48 | **FASE 5: DOCUMENTACION** | 10d | 2018-01-23 | 2018-02-05 |  |
| 49 | MEMORIA | 6d | 2018-01-23 | 2018-01-30 | 47 |
| 50 | ANEJOS A LA MEMORIA | 10d | 2018-01-23 | 2018-02-05 | 47 |
| 51 | PLANOS | 10d | 2018-01-23 | 2018-02-05 | 47 |
| 52 | PLIEGO DE CONDICIONES | 3d | 2018-01-23 | 2018-01-25 | 47 |
| 53 | PRESUPUESTO | 3d | 2018-01-23 | 2018-01-25 | 47 |
| 54 | ESTUDIO DE SEGURIDAD Y SALUD | 10d | 2018-01-23 | 2018-02-05 | 47 |
| 55 | Entrega del proyecto | 0d | 2018-01-24 | 2018-01-24 | 54, 49, 50, 51, 52, 53 |

Changed:

| ID | Task | Duration |
| --- | --- | --- |
| 3 | INICIO | 1d → 0d |
| 10 | Entrega al PROMOTOR. Doc. nº1 | 1d → 0d |
| 12 | **FASE 2: ANALISIS Y DIAGNOSTICO** | 134d? → 133d? |
| 30 | CONCLUSIONES Y Doc. Nº2. Presentación al PROMOTOR | 1d → 0d |
| 31 | Doc. nº2. REVISIÓN POR EL PROMOTOR | 1d? → 0d |

## Version 3 (saved 2017-03-22)

Note of the change: Recursos fase 1

Last finish stays 2018-04-20.

Changed:

| ID | Task | Other |
| --- | --- | --- |
| 3 | INICIO | resources none → DIRECTOR PROYECTO |
| 4 | TERMINOS DE REFERENCIA. Objetivos. Condicionantes del Promotor | resources none → DIRECTOR PROYECTO [25%]; INGENIERO AGRONOMO [25%]; ECONOMISTA [50%]; SOCIOLOGO [25%]; INGENIERO EN MEDIOAMBIENTE [25%] |
| 5 | FINANCIACION | resources none → DIRECTOR PROYECTO [15%]; INGENIERO AGRONOMO [25%]; ECONOMISTA [50%]; SOCIOLOGO [25%] |
| 6 | COMITÉ DE COORDINACION. Constitución y organización | resources none → DIRECTOR PROYECTO [25%] |
| 7 | EQUIPO DE FORMULACION. Recursos humanos y técnicos | resources none → DIRECTOR PROYECTO [25%]; ECONOMISTA [20%]; SOCIOLOGO [10%]; INGENIERO EN MEDIOAMBIENTE [10%]; INGENIERO AGRONOMO [10%]; ADMINISTRATIVO [10%] |
| 8 | METODOLOGIA Y PLAN DE TRABAJO | resources none → INGENIERO AGRONOMO [50%]; DIRECTOR PROYECTO [50%]; ECONOMISTA; SOCIOLOGO [50%]; INGENIERO EN MEDIOAMBIENTE [50%]; ADMINISTRATIVO [50%] |
| 9 | DOC. Nº1: Fin P.F | resources none → DIRECTOR PROYECTO [50%]; ECONOMISTA [50%]; SOCIOLOGO [20%]; INGENIERO EN MEDIOAMBIENTE [20%]; INGENIERO AGRONOMO [20%]; ADMINISTRATIVO |
| 10 | Entrega al PROMOTOR. Doc. nº1 | resources none → DIRECTOR PROYECTO [50%] |
| 11 | SEMINARIO DE LANZAMIENTO DEL PROYECTO | resources none → DIRECTOR PROYECTO; ECONOMISTA; SOCIOLOGO; INGENIERO EN MEDIOAMBIENTE; INGENIERO AGRONOMO; ADMINISTRATIVO |
